# Предварительный план2007

Schedule from MS Project, 2013-04-22 to 2014-05-07, A marks actual dates.

## Calendars

- Стандартный: Mon-Fri 09:00-13:00, 14:00-18:00; Sat-Sun off. Exceptions (off unless hours are given): 2013-05-01 to 2013-05-05 (Первое мая), 2013-05-09 to 2013-05-12 (Девятое мая).

## Resources

| Resource |
| --- |
| Шилин Роман |
| Аналитик |
| Андрей Пирожков |
| Тугушев Илья |
| Денис Митавский |
| Алексей Львов |
| Андрей Карандей |
| Валерий Мацукевич |
| Java разработчик3 |
| Java разработчик4 |
| WEB-дизайнер |
| Влад Симоненко |
| Андрей Цветков |
| Java разработчик5 |
| Тест Аналитик |
| Java разработчик6 |
| Тестировщик |
| Технический писатель |
| Технолог - администратор |
| Технический писатель2 |
| Системный аналитик1 |
| Системный аналитик2 |
| Системный аналитик3 |
| Системный аналитик4 |
| Владимир Панов |
| Сергей Кашанский |
| Роман Митинков |
| Роман Болотов |
| Глеб Наздрачев |
| Евгения Капустина |
| Эдуард Михайлов |
| Тимофей Билый |

## Schedule

| ID | WBS | Task | Type | Duration | Start | Finish | Predecessors | Complete | Remaining | Total slack | Free slack | Constraint | Resources | Work | Actual work |
| --- | --- | --- | --- | --- | --- | --- | --- | --- | --- | --- | --- | --- | --- | --- | --- |
| 1 | 1 | **Разработка второй версии CM4/5** |  | 268d? | 2013-04-22 A | 2014-05-07 |  | 8% | 247.69d? | 0d |  |  |  | 26590.4h | 1558.34h |
| 2 | 1.1 | Принято решение о начале разработки | milestone | 0d | 2013-04-22 | 2013-04-22 |  |  |  | 0d |  | start no earlier than 2013-04-22 |  |  |  |
| 3 | 1.2 | Управление проектом |  | 267d | 2013-04-22 | 2014-05-06 | 2 |  |  | 1d |  |  | Шилин Роман | 2136h |  |
| 4 | 1.3 | **Управление требованиями** |  | 193d | 2013-05-27 A | 2014-02-19 | 2 | 6% | 181.71d | 55d |  |  | Аналитик | 3463.2h | 178.34h |
| 5 | 1.3.1 | Выделен аналитик на проект | milestone | 0d | 2013-05-27 A | 2013-05-27 A |  | 100% |  |  |  | start no earlier than 2013-05-27 |  |  |  |
| 6 | 1.3.2 | Формирование скоупа проекта _ верхний уровень |  | 15d | 2013-05-27 A | 2013-06-14 | 5 | 73% | 4d | 55d | 0d |  | Евгения Капустина | 120h | 88h |
| 7 | 1.3.3 | Скоуп на систему сформирован и утвержден | milestone | 0d | 2013-06-21 | 2013-06-21 | 6FS+5d |  |  | 55d | 0d |  |  |  |  |
| 8 | 1.3.4 | Сопровождение требований |  | 173d | 2013-06-24 | 2014-02-19 | 5, 7 |  |  | 55d |  |  | Эдуард Михайлов; Евгения Капустина [30%] | 1799.2h |  |
| 9 | 1.4 | **Создание модуля "Делопроизводство" (документоориентированная среда)** |  | 217d? | 2013-04-22 A | 2014-02-25 |  | 12% | 190.76d? | 51d |  |  |  | 14390.4h | 1380h |
| 10 | 1.4.1 | Первичные требования для создания модуля "Делопроизводство" подготовлены | milestone | 0d | 2013-04-22 | 2013-04-22 | 2 |  |  | 0d |  | finish no earlier than 2012-04-02 |  |  |  |
| 11 | 1.4.2 | **Апробация идей прототипа** |  | 24d | 2013-04-29 A | 2013-06-06 |  | 99% | 0d | 239d |  |  |  | 144h | 144h |
| 12 | 1.4.2.1 | Пирожков доступен | milestone | 0d | 2013-06-03 | 2013-06-03 |  |  |  | 243d |  | start no earlier than 2013-06-03 |  |  |  |
| 13 | 1.4.2.2 | Проведение предварительных испытаний системы |  | 9d | 2013-04-29 A | 2013-05-16 A | 10FS+5d | 100% |  |  |  |  | Андрей Цветков | 72h | 72h |
| 14 | 1.4.2.3 | Описание обработки ВХ. Док. На примере технологий прототипа |  | 9d | 2013-05-20 A | 2013-06-06 A |  | 100% |  |  |  | start no earlier than 2013-05-20 | Андрей Пирожков | 72h | 72h |
| 15 | 1.4.3 | **Настройка инфраструктуры** |  | 37d | 2013-05-20 A | 2013-07-09 | 24 | 47% | 19.73d | -21d | 0d |  |  | 120h | 56h |
| 16 | 1.4.3.1 | Настройка непрерывной интеграции |  | 4d | 2013-05-20 A | 2013-05-23 A |  | 100% |  |  |  |  | Тугушев Илья | 32h | 32h |
| 17 | 1.4.3.2 | Поддержка UNIT-тестирования и интеграционного тестирования на уроне среды непрерывной интеграции |  | 5d | 2013-06-04 | 2013-06-10 |  |  |  | 0d |  | start no earlier than 2013-06-04 | Тугушев Илья | 40h |  |
| 18 | 1.4.3.3 | Репакеджинг проекта |  | 3d | 2013-05-27 A | 2013-05-29 A |  | 100% |  |  |  | start no earlier than 2013-05-27 | Сергей Кашанский | 24h | 24h |
| 19 | 1.4.3.4 | Автоматическое заполнение параметров JDBC через Maven |  | 3d | 2013-07-05 | 2013-07-09 | 30 |  |  | -21d | 0d |  | Андрей Цветков | 24h |  |
| 20 | 1.4.4 | **Проектирование и формирование ядра системы** |  | 137d? | 2013-04-22 A | 2013-11-05 | 10 | 17% | 113.04d? | 63d | 0d |  |  | 6034.4h | 940h |
| 21 | 1.4.4.1 | **Определение структуры модуля Делопроизводство** |  | 25d | 2013-04-22 A | 2013-05-31 A |  | 100% |  |  |  |  |  | 352h | 352h |
| 22 | 1.4.4.1.1 | Разбивка на слои |  | 5d | 2013-04-22 A | 2013-04-26 A |  | 100% |  |  |  |  | Денис Митавский [50%]; Андрей Пирожков [50%] | 40h | 40h |
| 23 | 1.4.4.1.2 | Конфигурации, загрузка и инициализация системы в базовой конфигурации |  | 5d | 2013-04-29 A | 2013-05-08 A | 22 | 100% |  |  |  |  | Валерий Мацукевич; Денис Митавский [50%] | 60h | 60h |
| 24 | 1.4.4.1.3 | Базовая конфигурация объектов системы |  | 5d | 2013-05-13 A | 2013-05-17 A | 22, 23 | 100% |  |  |  |  | Денис Митавский [50%]; Валерий Мацукевич | 60h | 60h |
| 25 | 1.4.4.1.4 | Юнит-тестирование - базис |  | 6d | 2013-05-17 A | 2013-05-24 A | 13 | 100% |  |  |  |  | Денис Митавский [50%]; Андрей Цветков | 72h | 72h |
| 26 | 1.4.4.1.5 | Базовая имплементация слоя DAO |  | 5d | 2013-05-20 A | 2013-05-24 A | 24 | 100% |  |  |  |  | Валерий Мацукевич | 40h | 40h |
| 27 | 1.4.4.1.6 | Обеспечение программных компонет верификации первой очереди |  | 5d | 2013-05-27 A | 2013-05-31 A | 26 | 100% |  |  |  |  | Валерий Мацукевич; Андрей Цветков | 80h | 80h |

Notes:
- 27: UNIT тестирование в рамках наработанного кода

| ID | WBS | Task | Type | Duration | Start | Finish | Predecessors | Complete | Remaining | Total slack | Free slack | Constraint | Resources | Work | Actual work |
| --- | --- | --- | --- | --- | --- | --- | --- | --- | --- | --- | --- | --- | --- | --- | --- |
| 28 | 1.4.4.2 | **DAO** |  | 36d? | 2013-06-03 A | 2013-07-22 | 26, 27 | 84% | 5.81d? | 85d |  |  |  | 224h | 184h |
| 29 | 1.4.4.2.1 | DAO для бизнес-объектов |  | 7d | 2013-06-03 A | 2013-06-11 A |  | 100% |  |  |  |  | Валерий Мацукевич | 56h | 56h |
| 30 | 1.4.4.2.2 | DAO для коллекций |  | 13d | 2013-06-12 A | 2013-07-04 A | 29 | 100% |  |  |  |  | Андрей Цветков | 104h | 104h |
| 31 | 1.4.4.2.3 | Функционал системы готов для проведения проектирования интеграции с GUI СМ4 | milestone | 0d | 2013-06-24 A | 2013-06-24 A | 29, 30 | 100% |  |  |  |  |  |  |  |
| 32 | 1.4.4.2.4 | DAO - утилитарные поля |  | 6d | 2013-06-25 A | 2013-07-08 A | 30 | 100% |  |  |  |  | Денис Митавский [50%] | 24h | 24h |
| 33 | 1.4.4.2.5 | DAO - кэш уровня транзакции |  | 5d? | 2013-07-16 | 2013-07-22 | 104 |  |  | 85d | 0d |  | Валерий Мацукевич | 40h |  |
| 34 | 1.4.4.3 | CRUD-сервис для бизнес-объектов |  | 10d | 2013-06-11 A | 2013-06-24 A | 30FF | 100% |  |  |  |  | Андрей Цветков | 80h | 80h |
| 35 | 1.4.4.4 | Поддержка отсортированных дочерних бизнес-объектов |  | 5d | 2013-07-23 | 2013-07-29 | 33 |  |  | 85d | 0d |  | Валерий Мацукевич | 40h |  |
| 36 | 1.4.4.5 | Настройка Datasources/Jaas сервера приложений средствами Maven |  | 2d | 2013-07-05 A | 2013-07-08 A | 30 | 100% |  |  |  |  | Сергей Кашанский | 16h | 16h |
| 37 | 1.4.4.6 | Рефакторинг |  | 4d | 2013-07-03 A | 2013-07-08 A | 26 | 100% |  |  |  | start no earlier than 2013-07-03 | Валерий Мацукевич | 32h | 32h |
| 38 | 1.4.4.7 | **Права доступа** |  | 39d | 2013-06-12 A | 2013-08-05 |  | 31% | 26.9d | 129d |  |  |  | 192h | 36h |
| 39 | 1.4.4.7.1 | Права - оптимизация хранения (проектирование) |  | 10d | 2013-06-12 A | 2013-06-25 | 29 | 90% | 1d | 0d |  |  | Андрей Пирожков [50%] | 40h | 36h |
| 40 | 1.4.4.7.2 | Описание существующими декларативными средствами конфигурации |  | 9d | 2013-07-10 | 2013-07-22 | 39, 19 |  |  | 129d | 0d |  | Андрей Цветков | 72h |  |
| 41 | 1.4.4.7.3 | Автофильтрация |  | 10d | 2013-07-23 | 2013-08-05 | 40 |  |  | 129d |  |  | Андрей Цветков | 80h |  |
| 42 | 1.4.4.8 | **Workflow - интеграция с Activiti** |  | 40d | 2013-06-07 A | 2013-08-01 | 14 | 10% | 36d | 53d | 17d |  |  | 280h | 12h |
| 43 | 1.4.4.8.1 | Проектирование |  | 10d | 2013-06-07 A | 2013-07-04 | 39 | 30% | 7d | 53d | 0d |  | Андрей Пирожков [50%] | 40h | 12h |
| 44 | 1.4.4.8.2 | Разработка |  | 20d | 2013-07-05 | 2013-08-01 | 43 |  |  | 53d |  |  | Андрей Пирожков [50%]; Сергей Кашанский | 240h |  |
| 45 | 1.4.4.9 | Наследование/Аспекты |  | 20d | 2013-07-05 | 2013-08-01 | 43 |  |  | 131d |  |  | Андрей Пирожков [50%] | 80h |  |
| 46 | 1.4.4.10 | **Коллекции** |  | 25d | 2013-05-29 A | 2013-07-02 |  | 62% | 9.48d | 120d |  |  |  | 320h | 188h |
| 47 | 1.4.4.10.1 | Коллекции - конфигурация |  | 3d | 2013-05-29 A | 2013-05-31 A |  | 100% |  |  |  |  | Денис Митавский | 24h | 24h |
| 48 | 1.4.4.10.2 | DAO - язык запросов коллекций |  | 12d | 2013-05-29 A | 2013-06-17 A | 47 | 100% |  |  |  |  | Сергей Кашанский; Денис Митавский [50%] | 140h | 140h |
| 49 | 1.4.4.10.3 | Сервис получения и получения счетчиков |  | 3d | 2013-05-29 A | 2013-05-31 A | 47 | 100% |  |  |  |  | Сергей Кашанский | 24h | 24h |
| 50 | 1.4.4.10.4 | ПКД |  | 11d | 2013-06-18 | 2013-07-02 | 48 |  |  | 120d | 0d |  | Андрей Пирожков [50%]; Сергей Кашанский | 132h |  |
| 51 | 1.4.4.11 | **Действия** |  | 18d | 2013-06-03 | 2013-06-26 |  |  |  | 157d |  |  |  | 184h |  |
| 52 | 1.4.4.11.1 | Концепция |  | 4d | 2013-06-03 | 2013-06-06 | 47 |  |  | 157d | 0d |  | Андрей Пирожков [50%] | 16h |  |
| 53 | 1.4.4.11.2 | Реализация |  | 14d | 2013-06-07 | 2013-06-26 | 52 |  |  | 157d |  |  | Роман Митинков; Андрей Пирожков [50%] | 168h |  |

Notes:
- 34: - проектирование базового API / - имплементация
- 35: Для отображени и поддержания заданного порядка следования объектов
- 39: Права доступа - оптимизация подхода, / подбор других названий сущностей (таблицы) переименовать таблицы и улучшить производительность
- 40: Права доступа - описание существующими декларативными средствами конфигурации / (для автоматического создания таблиц) + / конфигурирование под-запроса для фильтрации - там же
- 41: Права доступа - авто-фильтрация / + "внедрение в под-запросы"
- 42: Задачи: / - модель процесса (BPMN) / - Имплементация WF - сервиса , взаимодействие системы с Аctiviti
- 45: Архитектура - форма хранения данных (с учетом производительности) / -требуется вернуться к обсуждению
- 48: DAO - язык запросов коллекций
- 49: Коллекции - сервис получения и получения счетчиков
- 50: Для поддержания реализации избранного, отметок о прочтении и т.д.

| ID | WBS | Task | Type | Duration | Start | Finish | Predecessors | Complete | Remaining | Total slack | Free slack | Constraint | Resources | Work | Actual work |
| --- | --- | --- | --- | --- | --- | --- | --- | --- | --- | --- | --- | --- | --- | --- | --- |
| 54 | 1.4.4.12 | **Бизнес-объекты (иерархии доменных объектов)** |  | 7d | 2013-04-22 | 2013-04-30 |  |  |  | 193d |  |  |  |  |  |
| 55 | 1.4.4.12.1 | Проектирование |  | 4d | 2013-04-22 | 2013-04-25 |  |  |  | 196d |  |  |  |  |  |
| 56 | 1.4.4.12.2 | Реализация |  | 7d | 2013-04-22 | 2013-04-30 |  |  |  | 193d |  |  |  |  |  |
| 57 | 1.4.4.13 | **Слой сопряжения GUI CM4** |  | 132d | 2013-04-29 | 2013-11-05 |  |  |  | 59d |  |  |  | 1394.4h |  |
| 58 | 1.4.4.13.1 | REST-протокол для АРМа - проектирование |  | 3d | 2013-06-25 | 2013-06-27 | 31 |  |  | 23d |  |  | Тугушев Илья; Денис Митавский [20%]; Андрей Пирожков [20%] | 33.6h |  |
| 59 | 1.4.4.13.2 | Проектиирование выполнено и ресурсы достуны | milestone | 0d | 2013-07-31 | 2013-07-31 |  |  |  | 0d |  | start no earlier than 2013-07-31 |  |  |  |
| 60 | 1.4.4.13.3 | Реализация коннекторов к платформе |  | 70d | 2013-07-31 | 2013-11-05 | 58, 59 |  |  | 0d |  |  | Тугушев Илья [33%]; Роман Болотов; Глеб Наздрачев | 1304.8h |  |
| 61 | 1.4.4.13.4 | Сопряжение - работа с вложениями |  | 7d | 2013-04-29 | 2013-05-14 | 64 |  |  | 188d |  |  | Влад Симоненко | 56h |  |
| 62 | 1.4.4.14 | **Сервис работы с вложениями** |  | 5d | 2013-04-22 | 2013-04-26 |  |  |  | 188d |  |  |  | 40h |  |
| 63 | 1.4.4.14.1 | API |  | 2d | 2013-04-22 | 2013-04-23 |  |  |  | 188d | 0d |  | Андрей Цветков | 16h |  |
| 64 | 1.4.4.14.2 | Реализация |  | 3d | 2013-04-24 | 2013-04-26 | 63 |  |  | 188d | 0d |  | Влад Симоненко | 24h |  |
| 65 | 1.4.4.15 | **Поиск** |  | 26d | 2013-07-29 | 2013-09-03 | 34 |  |  | 36d |  |  |  | 436h |  |
| 66 | 1.4.4.15.1 | Идея поиска овормлена | milestone | 0d | 2013-07-29 | 2013-07-29 |  |  |  | 36d | 0d | finish no earlier than 2013-07-29 |  |  |  |
| 67 | 1.4.4.15.2 | Поиск |  | 15d | 2013-07-30 | 2013-08-19 | 66 |  |  | 113d | 5d |  | Денис Митавский [50%]; Андрей Цветков | 180h |  |
| 68 | 1.4.4.15.3 | Полнотекстовый поиск |  | 20d | 2013-07-30 | 2013-08-26 | 66 |  |  | 108d | 0d |  | Влад Симоненко | 160h |  |
| 69 | 1.4.4.15.4 | Расширенный поиск |  | 6d | 2013-08-27 | 2013-09-03 | 67, 68 |  |  | 108d |  |  | Денис Митавский; Андрей Цветков | 96h |  |
| 70 | 1.4.4.16 | **Работа с отчетами** |  | 23d | 2013-07-03 | 2013-08-02 |  |  |  | 120d |  |  |  | 276h |  |
| 71 | 1.4.4.16.1 | JDBC-драйвер для системы построения отчётов |  | 8d | 2013-07-03 | 2013-07-12 | 50 |  |  | 120d | 0d |  | Денис Митавский [50%]; Андрей Цветков | 96h |  |
| 72 | 1.4.4.16.2 | Интеграция с Jasper Reports |  | 15d | 2013-07-15 | 2013-08-02 | 71 |  |  | 120d | 0d |  | Денис Митавский [50%]; Андрей Цветков | 180h |  |
| 73 | 1.4.4.17 | **GUI** |  | 69d? | 2013-07-08 A | 2013-10-10 |  | 4% | 66.58d? | 79d | 0d |  |  | 616h | 16h |
| 74 | 1.4.4.17.1 | Стилистическая адаптация компонентов GUI |  | 14d | 2013-07-11 | 2013-07-30 |  |  |  | 131d |  | start no earlier than 2013-07-11 | Тимофей Билый; Алексей Львов | 224h |  |
| 75 | 1.4.4.17.2 | Интеграция с JAAS/Аутентификация |  | 4d | 2013-07-08 A | 2013-07-11 A |  | 100% |  |  |  | start no earlier than 2013-07-08 | Денис Митавский [50%] | 16h | 16h |
| 76 | 1.4.4.17.3 | GUI - панель навигации |  | 8d | 2013-07-12 | 2013-07-23 | 75 |  |  | 73d | 0d |  | Денис Митавский [50%] | 32h |  |
| 77 | 1.4.4.17.4 | GUI - архитектура активностей/дочерних активностей |  | 8d | 2013-07-24 | 2013-08-02 | 76 |  |  | 73d | 0d |  | Денис Митавский [50%] | 32h |  |
| 78 | 1.4.4.17.5 | GUI - отображение коллекций активность |  | 8d | 2013-08-05 | 2013-08-14 | 77 |  |  | 73d | 0d |  | Денис Митавский [50%] | 32h |  |
| 79 | 1.4.4.17.6 | GUI - действия |  | 8d | 2013-08-15 | 2013-08-26 | 78 |  |  | 73d | 0d |  | Денис Митавский [50%] | 32h |  |

Notes:
- 60: Начальная реализация модуля "документооборот" - замена лотуса
- 68: Включая взаимодействие с Solr
- 69: C учетом релевантности и оптимизации по объедененеию поисков аттрибутивного и полнотекстового
- 71: Используя язык запросов коллеций

| ID | WBS | Task | Duration | Start | Finish | Predecessors | Complete | Remaining | Total slack | Free slack | Resources | Work | Actual work |
| --- | --- | --- | --- | --- | --- | --- | --- | --- | --- | --- | --- | --- | --- |
| 80 | 1.4.4.17.7 | **Формы встроенного GUI** | 18d | 2013-08-27 | 2013-09-19 |  |  |  | 73d |  |  | 112h |  |
| 81 | 1.4.4.17.7.1 | Конфигурация | 3d | 2013-08-27 | 2013-08-29 | 79 |  |  | 73d | 0d | Денис Митавский [50%] | 12h |  |
| 82 | 1.4.4.17.7.2 | API | 5d | 2013-08-30 | 2013-09-05 | 81 |  |  | 73d | 0d | Денис Митавский [50%] | 20h |  |
| 83 | 1.4.4.17.7.3 | Реализация | 10d | 2013-09-06 | 2013-09-19 | 82 |  |  | 90d | 0d | Андрей Карандей | 80h |  |
| 84 | 1.4.4.17.8 | GUI - отображение отчётов | 8d | 2013-08-05 | 2013-08-14 | 72 |  |  | 120d |  | Андрей Цветков | 64h |  |
| 85 | 1.4.4.17.9 | **GUI - поиск** | 14d | 2013-09-06 | 2013-09-25 |  |  |  | 73d |  |  | 44h |  |
| 86 | 1.4.4.17.9.1 | GUI - поиск. Проектирование | 3d | 2013-09-06 | 2013-09-10 | 82 |  |  | 73d | 0d | Денис Митавский [50%] | 12h |  |
| 87 | 1.4.4.17.9.2 | GUI - поиск. Реализация | 4d | 2013-09-20 | 2013-09-25 | 83 |  |  | 90d |  | Андрей Карандей | 32h |  |
| 88 | 1.4.4.17.10 | **GUI - виджеты разработка (базовый набор)** | 25d? | 2013-09-06 | 2013-10-10 |  |  |  | 79d |  |  | 8h |  |
| 89 | 1.4.4.17.10.1 | Дата/время | 1d? | 2013-09-06 | 2013-09-06 | 82 |  |  | 103d |  | Тимофей Билый | 8h |  |
| 90 | 1.4.4.17.10.2 | Остальные | 25d? | 2013-09-06 | 2013-10-10 | 82 |  |  | 79d |  |  |  |  |
| 91 | 1.4.4.17.11 | **GUI - брендинг, стилизация, темы** | 5d | 2013-09-11 | 2013-09-17 |  |  |  | 73d |  |  | 20h |  |
| 92 | 1.4.4.17.11.1 | Концепция | 5d | 2013-09-11 | 2013-09-17 | 86 |  |  | 73d | 0d | Денис Митавский [50%] | 20h |  |
| 93 | 1.4.4.18 | Тестирование производительности | 25d | 2013-09-18 | 2013-10-22 | 92 |  |  | 73d |  | Денис Митавский; Валерий Мацукевич | 400h |  |
| 94 | 1.4.4.19 | Версионность/аудит | 8d | 2013-07-30 | 2013-08-08 | 35 |  |  | 85d | 0d | Валерий Мацукевич | 64h |  |
| 95 | 1.4.4.20 | Блокировки бизнес-объектов | 6d | 2013-08-09 | 2013-08-16 | 94 |  |  | 85d | 0d | Валерий Мацукевич | 48h |  |
| 96 | 1.4.4.21 | Описание структуры модуля Делопроизводство | 20d | 2013-07-30 | 2013-08-26 | 21, 15, 14, 66 |  |  | 36d | 0d | Владимир Панов | 160h |  |
| 97 | 1.4.4.22 | Уточнение состава и сроков работ | 2d | 2013-10-11 | 2013-10-14 | 73 |  |  | 79d |  | Андрей Пирожков; Денис Митавский; Тугушев Илья | 48h |  |
| 98 | 1.4.4.23 | Кросс-СУБД, поддержка Oracle | 15d | 2013-08-19 | 2013-09-06 | 95 |  |  | 85d | 0d | Валерий Мацукевич | 120h |  |
| 99 | 1.4.4.24 | SQL-trace | 5d | 2013-09-09 | 2013-09-13 | 98 |  |  | 85d | 0d | Влад Симоненко | 40h |  |
| 100 | 1.4.4.25 | Локализация (на уровне конфигурации) | 15d | 2013-09-16 | 2013-10-04 | 99 |  |  | 85d |  | Влад Симоненко | 120h |  |
| 101 | 1.4.4.26 | **Интеграция с системой управления учетными записями** | 14d | 2013-08-19 | 2013-09-05 | 95 |  |  | 106d |  |  | 56h |  |
| 102 | 1.4.4.26.1 | Интеграция с ActiveDirectory | 14d | 2013-08-19 | 2013-09-05 |  |  |  | 106d |  | Андрей Пирожков [50%] | 56h |  |
| 103 | 1.4.4.27 | **Расширение функций сервиса конфигурации** | 21d | 2013-07-09 A | 2013-08-06 |  | 14% | 18d | 113d |  |  | 296h | 24h |
| 104 | 1.4.4.27.1 | Расширяемость конфигурации | 5d | 2013-07-09 A | 2013-07-15 | 37 | 60% | 2d | 85d | 0d | Валерий Мацукевич | 40h | 24h |
| 105 | 1.4.4.27.2 | Изменение и дополнение конфигурации системы | 16d | 2013-07-16 | 2013-08-06 | 104 |  |  | 113d | 0d | Андрей Пирожков; Роман Митинков | 256h |  |

Notes:
- 93: - полноценное, продуманное, конфигурируемое, полностью автоматизированное (вплоть до промежуточного сбора статистики в СУБД перед запуском тестов производительности) с автоматической генерацией таблиц и графиков, с поддержкой нагружающих потоков и т.п.
- 94: История модификации объекта / Версионность - на бизнес слой
- 98: Кросс-СУБД, поддержка Oracle
- 100: Поддержка ресурсных файлов - в расках конфигурирования ресурсных файлов / Подмена языка в интерфейсе (передача локали пользоввателю) -

| ID | WBS | Task | Duration | Start | Finish | Predecessors | Complete | Remaining | Total slack | Free slack | Resources | Work | Actual work |
| --- | --- | --- | --- | --- | --- | --- | --- | --- | --- | --- | --- | --- | --- |
| 106 | 1.4.4.28 | **Сервис для работы с системным журналом** | 15d | 2013-08-07 | 2013-08-27 | 105 |  |  | 113d |  |  | 120h |  |
| 107 | 1.4.4.28.1 | Ведение журнала действий пользователей и действий с объектами системы | 10d | 2013-08-07 | 2013-08-20 |  |  |  | 113d | 0d | Андрей Карандей | 80h |  |
| 108 | 1.4.4.28.2 | Настройка уровня логирования | 5d | 2013-08-21 | 2013-08-27 | 107 |  |  | 113d |  | Андрей Карандей | 40h |  |
| 109 | 1.4.5 | **Разработка** | 156d | 2013-06-11 A | 2014-01-14 | 15 | 5% | 148.64d | 81d |  |  | 4908h | 240h |
| 110 | 1.4.5.1 | Контроль и корректировка технических решений "Архитектурный комитет" | 139d | 2013-06-11 A | 2013-12-23 |  | 14% | 119d | 97d |  | Тугушев Илья [20%]; Андрей Пирожков [20%]; Денис Митавский [20%]; WEB-дизайнер [20%]; Аналитик [20%]; Владимир Панов [50%] | 1668h | 240h |
| 111 | 1.4.5.2 | **Разработка серверной логики модуля Делопроизводство** | 40d | 2013-08-27 | 2013-10-21 | 15, 42, 96 |  |  | 36d |  |  | 1280h |  |
| 112 | 1.4.5.2.1 | Разработка схем документов модуля Делопроизводство | 20d | 2013-08-27 | 2013-09-23 |  |  |  | 36d | 0d | Андрей Пирожков [50%]; Влад Симоненко | 240h |  |
| 113 | 1.4.5.2.2 | Разработка ЖЦ процессов модуля (WF) | 20d | 2013-09-24 | 2013-10-21 | 112 |  |  | 54d | 0d | Влад Симоненко; Андрей Пирожков [50%] | 240h |  |
| 114 | 1.4.5.2.3 | Разработка логики бизнес- действий модуля "Делопроизводство" | 40d | 2013-08-27 | 2013-10-21 |  |  |  | 54d | 0d | Алексей Львов; Андрей Пирожков [50%] | 480h |  |
| 115 | 1.4.5.2.4 | Разработка процессов автоматизации для модуля "Делопроизводство" | 20d | 2013-08-27 | 2013-09-23 |  |  |  | 162d |  | Андрей Карандей | 160h |  |
| 116 | 1.4.5.2.5 | Разработка модели прав доступа (контекстные роли) | 20d | 2013-09-24 | 2013-10-21 | 112 |  |  | 142d |  | Андрей Карандей | 160h |  |
| 117 | 1.4.5.3 | **Разработка клиентской логики модуля "Делопроизводство"** | 10d | 2013-11-06 | 2013-11-19 | 60 |  |  | 0d |  |  | 160h |  |
| 118 | 1.4.5.3.1 | Разработка форм для работы с документами в GUI (настройки форм) | 5d | 2013-11-06 | 2013-11-12 |  |  |  | 0d |  | Java разработчик3 | 40h |  |
| 119 | 1.4.5.3.2 | Разработка структуры рабочего места | 5d | 2013-11-13 | 2013-11-19 | 112, 118 |  |  | 0d |  | Java разработчик3 | 40h |  |
| 120 | 1.4.5.3.3 | Разработка специфичных для модуля форм элементов GUI | 10d | 2013-11-06 | 2013-11-19 |  |  |  | 0d |  | Java разработчик4 | 80h |  |
| 121 | 1.4.5.4 | **Подготовка работы со списками значений** | 40d | 2013-11-20 | 2014-01-14 |  |  |  | 81d |  |  | 640h |  |
| 122 | 1.4.5.4.1 | Разработка функционала учета организационно штатной структуры | 40d | 2013-11-20 | 2014-01-14 | 117 |  |  | 81d |  | Андрей Цветков | 320h |  |
| 123 | 1.4.5.4.2 | Разработка функционала с рубрикаторами (сложные справочники) | 20d | 2013-11-20 | 2013-12-17 | 117 |  |  | 81d | 0d | Валерий Мацукевич | 160h |  |
| 124 | 1.4.5.4.3 | Разработка функционала для работы с словарями данных (простые, линейные справочники) | 20d | 2013-12-18 | 2014-01-14 | 123 |  |  | 81d |  | Валерий Мацукевич | 160h |  |
| 125 | 1.4.5.5 | Подготовка отчетов | 40d | 2013-10-22 | 2013-12-16 | 112, 114, 113 |  |  | 54d | 0d | Влад Симоненко; Алексей Львов; Андрей Карандей | 960h |  |
| 126 | 1.4.5.6 | Сопряжение с мобильным клиентом СМ4 | 25d | 2013-11-20 | 2013-12-24 | 117 |  |  | 96d |  | Java разработчик3 | 200h |  |
| 127 | 1.4.6 | **Тестирование** | 77d? | 2013-11-06 | 2014-02-20 | 20 |  |  | 54d | 0d |  | 2544h |  |
| 128 | 1.4.6.1 | **Функциональное тестирование** | 62d? | 2013-11-06 | 2014-01-30 |  |  |  | 63d |  |  | 2224h |  |
| 129 | 1.4.6.1.1 | Подготовка ПМИ | 5d | 2013-11-06 | 2013-11-12 |  |  |  | 63d | 0d | Тест Аналитик | 40h |  |
| 130 | 1.4.6.1.2 | Разработка "сценариев тестирования" | 15d | 2013-11-06 | 2013-11-26 |  |  |  | 68d | 9d | Тест Аналитик | 120h |  |
| 131 | 1.4.6.1.3 | Разработка модели нагрузки для тестирования | 10d | 2013-11-13 | 2013-11-26 | 129 |  |  | 68d | 9d | Тест Аналитик | 80h |  |
| 132 | 1.4.6.1.4 | Адаптация автоматизированных сценариев от СМ4 для создания нагрузки | 25d | 2013-11-13 | 2013-12-17 | 129 |  |  | 63d | 9d | Влад Симоненко | 200h |  |

Notes:
- 106: Сервис для работы с системным журналомВедение журнала действий пользователей и действий с объектами системы
- 107: Ведение журнала действий пользователей и действий с объектами системы

| ID | WBS | Task | Type | Duration | Start | Finish | Predecessors | Total slack | Free slack | Constraint | Resources | Work |
| --- | --- | --- | --- | --- | --- | --- | --- | --- | --- | --- | --- | --- |
| 133 | 1.4.6.1.5 | **Проведение тестирования** |  | 38d? | 2013-12-10 | 2014-01-30 | 130, 131 | 59d | 0d |  |  | 1784h |
| 134 | 1.4.6.1.5.1 | **Подготовка среды тестирования** |  | 15d? | 2013-12-10 | 2013-12-30 |  | 59d |  |  |  | 200h |
| 135 | 1.4.6.1.5.1.1 | Разворачивание системы |  | 5d? | 2013-12-10 | 2013-12-17 | 137SF | 102d | 0d |  | Влад Симоненко | 40h |
| 136 | 1.4.6.1.5.1.2 | Система готова для подключения инструментов мониторинга | milestone | 0d | 2013-12-17 | 2013-12-17 | 135 | 102d |  |  |  |  |
| 137 | 1.4.6.1.5.1.3 | Наполнение данными |  | 10d? | 2013-12-17 | 2013-12-30 | 125 | 54d | 0d |  | Влад Симоненко; Java разработчик6 | 160h |
| 138 | 1.4.6.1.5.2 | Среда тестирования готова | milestone | 0d | 2013-12-30 | 2013-12-30 | 137, 132 | 54d | 0d | start no earlier than 2012-05-24 |  |  |
| 139 | 1.4.6.1.5.3 | Проведение тестирования |  | 10d | 2013-12-31 | 2014-01-13 | 138 | 54d | 0d |  | Тест Аналитик; Тестировщик [200%] | 240h |
| 140 | 1.4.6.1.5.4 | **Обработка результатов тестирования и внесение изменений в модуль** |  | 15d | 2014-01-10 | 2014-01-30 | 139FS-2d | 54d |  |  |  | 1344h |
| 141 | 1.4.6.1.5.4.1 | Устранение замечаний по результатам функционального тестирования |  | 15d | 2014-01-10 | 2014-01-30 |  | 54d | 0d |  | Java разработчик5; Влад Симоненко [300%]; Валерий Мацукевич; Java разработчик3; Java разработчик4; Андрей Карандей; Алексей Львов; Андрей Цветков | 1200h |
| 142 | 1.4.6.1.5.4.2 | Проверка устранения замечаний |  | 6d | 2014-01-23 | 2014-01-30 | 141FS-6d | 54d | 0d |  | Тест Аналитик; Тестировщик [200%] | 144h |
| 143 | 1.4.6.2 | **Нагрузочное тестирование** |  | 28d | 2014-01-13 | 2014-02-20 | 129 | 54d |  |  |  | 320h |
| 144 | 1.4.6.2.1 | Стенд для нагрузочного тестирования подготовлен | milestone | 0d | 2014-01-13 | 2014-01-13 | 139 | 67d | 13d | finish no earlier than 2012-06-09 |  |  |
| 145 | 1.4.6.2.2 | Проведения нагрузочного тестирования |  | 10d | 2014-01-31 | 2014-02-13 | 142, 132, 144 | 54d | 0d |  | Влад Симоненко; Тест Аналитик; Тестировщик | 240h |
| 146 | 1.4.6.2.3 | Обработка результатов нагрузочного тестирования |  | 5d | 2014-02-14 | 2014-02-20 | 145 | 54d |  |  | Тест Аналитик; Тестировщик | 80h |
| 147 | 1.4.7 | Разработка модуля "Делопроизводство" завершена | milestone | 0d | 2014-02-20 | 2014-02-20 | 127 | 54d |  |  |  |  |
| 148 | 1.4.8 | **Подготовка документации** |  | 80d | 2013-11-06 | 2014-02-25 | 127SS | 51d |  |  |  | 640h |
| 149 | 1.4.8.1 | Разработка документа "Концепция системы " |  | 40d | 2013-11-06 | 2013-12-31 |  | 51d | 0d |  | Владимир Панов | 320h |
| 150 | 1.4.8.2 | Разработка "Software Architecture Document" |  | 40d | 2014-01-01 | 2014-02-25 | 149 | 51d | 0d |  | Владимир Панов | 320h |
| 151 | 1.4.8.3 | Документы подготовлены | milestone | 0d | 2014-02-25 | 2014-02-25 | 150 | 51d |  |  |  |  |
| 152 | 1.5 | **Проверка работоспособности решения - Организация демонстрации** |  | 25d? | 2013-12-10 | 2014-01-13 | 133SS | 82d |  |  |  | 448h |
| 153 | 1.5.1 | Подготовка стенда |  | 3d | 2013-12-10 | 2013-12-12 | 154SF | 104d |  |  | Влад Симоненко; Аналитик | 48h |
| 154 | 1.5.2 | Подготовка прототипа |  | 20d? | 2013-12-10 | 2014-01-06 |  | 82d | 0d |  | Влад Симоненко; Аналитик | 320h |
| 155 | 1.5.3 | Проведение демонстраций |  | 3d | 2014-01-07 | 2014-01-09 | 154 | 82d | 0d |  | Влад Симоненко; Аналитик | 48h |
| 156 | 1.5.4 | Анализ результатов - выводы |  | 2d | 2014-01-10 | 2014-01-13 | 155 | 82d |  |  | Влад Симоненко; Аналитик | 32h |

| ID | WBS | Task | Type | Duration | Start | Finish | Predecessors | Total slack | Constraint | Resources | Work |
| --- | --- | --- | --- | --- | --- | --- | --- | --- | --- | --- | --- |
| 157 | 1.6 | **Создание модулей первой очереди** |  | 111d? | 2013-12-03 | 2014-05-07 |  | 0d |  |  | 6152.8h |
| 158 | 1.6.1 | Определен состав модулей первой очереди и первичные требования подготовлены | milestone | 0d | 2013-12-03 | 2013-12-03 | 117FS+10d | 0d | finish no earlier than 2012-04-02 |  |  |
| 159 | 1.6.2 | **Проектирование** |  | 18.33d | 2013-12-04 | 2013-12-30 | 158 | 0d |  |  | 480h |
| 160 | 1.6.2.1 | Определение структуры модулей первой очереди |  | 13d | 2013-12-04 | 2013-12-20 |  | 0d |  | Андрей Пирожков; Тугушев Илья; Денис Митавский; WEB-дизайнер | 416h |
| 161 | 1.6.2.2 | Уточнение состава и сроков работ |  | 5.33d | 2013-12-23 | 2013-12-30 | 160 | 14.67d |  | Тугушев Илья [50%]; Андрей Пирожков [50%]; Денис Митавский [50%] | 64h |
| 162 | 1.6.3 | Принято решение о разработке модулей второй очереди | milestone | 0d | 2013-12-20 | 2013-12-20 | 160 | 0d | finish no earlier than 2012-05-21 |  |  |
| 163 | 1.6.4 | **Разработка** |  | 40d | 2013-12-23 | 2014-02-14 | 162 | 0d |  |  | 2864.8h |
| 164 | 1.6.4.1 | Контроль и корректировка технических решений "Архитектурный комитет" |  | 37d | 2013-12-23 | 2014-02-11 |  | 61d |  | Тугушев Илья [10%]; Андрей Пирожков [10%]; Денис Митавский [10%]; WEB-дизайнер | 384.8h |
| 165 | 1.6.4.2 | **Разработка серверной логики модулей первой очереди** |  | 40d | 2013-12-23 | 2014-02-14 |  | 0d |  |  | 1600h |
| 166 | 1.6.4.2.1 | Разработка схем документов для модулей первой очереди |  | 20d | 2013-12-23 | 2014-01-17 |  | 0d |  | Андрей Карандей; Влад Симоненко | 320h |
| 167 | 1.6.4.2.2 | Разработка ЖЦ процессов (WF) |  | 20d | 2014-01-20 | 2014-02-14 | 166 | 0d |  | Андрей Карандей; Влад Симоненко | 320h |
| 168 | 1.6.4.2.3 | Разработка логики бизнес- действий для модулей первой очереди |  | 40d | 2013-12-23 | 2014-02-14 |  | 0d |  | Алексей Львов; Влад Симоненко | 640h |
| 169 | 1.6.4.2.4 | Разработка процессов автоматизации для модулей первой очереди |  | 20d | 2013-12-23 | 2014-01-17 |  | 20d |  | Влад Симоненко | 160h |
| 170 | 1.6.4.2.5 | Разработка модели прав доступа (контекстные роли) |  | 20d | 2014-01-20 | 2014-02-14 | 166 | 0d |  | Влад Симоненко | 160h |
| 171 | 1.6.4.3 | **Разработка клиентской логики модулей первой очереди** |  | 30d | 2013-12-23 | 2014-01-31 |  | 10d |  |  | 320h |
| 172 | 1.6.4.3.1 | Разработка форм для работы с документами в GUI (настройки форм) |  | 10d | 2013-12-23 | 2014-01-03 |  | 30d |  | Java разработчик3 | 80h |
| 173 | 1.6.4.3.2 | Разработка структуры рабочего места |  | 10d | 2014-01-20 | 2014-01-31 | 166 | 10d |  | Java разработчик3 | 80h |
| 174 | 1.6.4.3.3 | Разработка специфичных для модуля форм элементов GUI |  | 20d | 2013-12-23 | 2014-01-17 |  | 20d |  | Java разработчик4 | 160h |
| 175 | 1.6.4.4 | **Разработка вспомогательного инструментария** |  | 20d | 2013-12-30 | 2014-01-27 |  | 14.67d |  |  | 400h |
| 176 | 1.6.4.4.1 | Построитель форм |  | 10d | 2013-12-30 | 2014-01-13 | 159 | 24.67d |  | Андрей Цветков | 80h |
| 177 | 1.6.4.4.2 | Разработка инсталлятора |  | 20d | 2013-12-30 | 2014-01-27 | 159 | 14.67d |  | Валерий Мацукевич | 160h |
| 178 | 1.6.4.4.3 | Разработка конфигуратора |  | 10d | 2013-12-30 | 2014-01-13 | 159 | 24.67d |  | Java разработчик5; Влад Симоненко | 160h |
| 179 | 1.6.4.5 | Подготовка отчетов |  | 20d | 2013-12-23 | 2014-01-17 |  | 78d |  | Влад Симоненко | 160h |
| 180 | 1.6.5 | Сборка модулей первой очереди завершена | milestone | 0d | 2014-02-14 | 2014-02-14 | 165, 171, 175 | 0d |  |  |  |

| ID | WBS | Task | Type | Duration | Start | Finish | Predecessors | Total slack | Free slack | Constraint | Resources | Work |
| --- | --- | --- | --- | --- | --- | --- | --- | --- | --- | --- | --- | --- |
| 181 | 1.6.6 | **Тестирование** |  | 58d? | 2014-02-17 | 2014-05-07 | 180 | 0d |  |  |  | 2648h |
| 182 | 1.6.6.1 | **Функциональное тестирование** |  | 38d? | 2014-02-17 | 2014-04-09 |  | 0d |  |  |  | 2024h |
| 183 | 1.6.6.1.1 | Подготовка ПМИ |  | 5d | 2014-02-17 | 2014-02-21 |  | 0d |  |  | Тест Аналитик | 40h |
| 184 | 1.6.6.1.2 | Разработка "сценариев тестирования" |  | 15d | 2014-02-17 | 2014-03-07 |  | 5d | 0d |  | Тест Аналитик | 120h |
| 185 | 1.6.6.1.3 | Разработка модели нагрузки для тестирования |  | 10d | 2014-02-24 | 2014-03-07 | 183 | 43d |  |  | Тест Аналитик | 80h |
| 186 | 1.6.6.1.4 | **Проведение тестирования** |  | 38d? | 2014-02-17 | 2014-04-09 |  | 5d |  |  |  | 1784h |
| 187 | 1.6.6.1.4.1 | **Подготовка среды тестирования** |  | 15d? | 2014-02-17 | 2014-03-07 |  | 5d |  |  |  | 200h |
| 188 | 1.6.6.1.4.1.1 | Разворачивание системы |  | 5d? | 2014-02-17 | 2014-02-21 |  | 5d | 0d |  | Влад Симоненко | 40h |
| 189 | 1.6.6.1.4.1.2 | Наполнение данными |  | 10d? | 2014-02-24 | 2014-03-07 | 188 | 5d | 0d |  | Влад Симоненко; Java разработчик6 | 160h |
| 190 | 1.6.6.1.4.2 | Среда тестирования готова | milestone | 0d | 2014-03-07 | 2014-03-07 | 184, 189 | 5d | 0d | finish no earlier than 2012-06-09 |  |  |
| 191 | 1.6.6.1.4.3 | Проведение тестирования |  | 10d | 2014-03-10 | 2014-03-21 | 190 | 5d | 0d |  | Тест Аналитик; Тестировщик [200%] | 240h |
| 192 | 1.6.6.1.4.4 | **Обработка результатов тестирования и внесение изменений в модуль** |  | 15d | 2014-03-20 | 2014-04-09 | 180, 191FS-2d | 5d |  |  |  | 1344h |
| 193 | 1.6.6.1.4.4.1 | Устранение замечаний по результатам функционального тестирования |  | 15d | 2014-03-20 | 2014-04-09 |  | 5d | 0d |  | Java разработчик5; Влад Симоненко [300%]; Валерий Мацукевич; Java разработчик3; Java разработчик4; Андрей Карандей; Алексей Львов; Андрей Цветков | 1200h |
| 194 | 1.6.6.1.4.4.2 | Проверка устранения замечаний |  | 6d | 2014-04-02 | 2014-04-09 | 193FS-6d | 5d | 0d |  | Тест Аналитик; Тестировщик [200%] | 144h |
| 195 | 1.6.6.2 | **Нагрузочное тестирование** |  | 53d | 2014-02-24 | 2014-05-07 | 183 | 0d |  |  |  | 624h |
| 196 | 1.6.6.2.1 | Подготовка автоматизированных сценариев для создания нагрузки |  | 38d | 2014-02-24 | 2014-04-16 |  | 0d |  |  | Влад Симоненко | 304h |
| 197 | 1.6.6.2.2 | Стенд для нагрузочного тестирования подготовлен | milestone | 0d | 2014-03-21 | 2014-03-21 | 191 | 18d |  | finish no earlier than 2012-06-09 |  |  |
| 198 | 1.6.6.2.3 | Проведения нагрузочного тестирования |  | 10d | 2014-04-17 | 2014-04-30 | 194, 196, 197 | 0d |  |  | Влад Симоненко; Тест Аналитик; Тестировщик | 240h |
| 199 | 1.6.6.2.4 | Обработка результатов нагрузочного тестирования |  | 5d | 2014-05-01 | 2014-05-07 | 198 | 0d |  |  | Тест Аналитик; Тестировщик | 80h |
| 200 | 1.6.7 | Разработка модулей первой очереди завершена | milestone | 0d | 2014-05-07 | 2014-05-07 | 181 | 0d |  |  |  |  |
| 201 | 1.6.8 | **Подготовка документации** |  | 38d? | 2014-02-17 | 2014-04-09 | 181SS | 20d |  |  |  | 160h |
| 202 | 1.6.8.1 | Разработка "Software Architecture Document" для модулей первой очереди |  | 20d | 2014-02-17 | 2014-03-14 |  | 38d | 18d |  | Технический писатель | 160h |
| 203 | 1.6.8.2 | Документы подготовлены | milestone | 0d | 2014-04-09 | 2014-04-09 | 194, 202 | 20d |  |  |  |  |
